# ЛР №1

How a schedule from MS Project changed from version to version. A marks actual dates.

## Version 1 (saved 2024-03-04)

Note of the change: lab_03 done

| ID | WBS | Task | Duration | Start | Finish | Predecessors | Total float | Constraint |
| --- | --- | --- | --- | --- | --- | --- | --- | --- |
| 1 |  | Начало проекта | 0d | 2024-03-01 09:00 | 2024-03-01 09:00 |  | 70.23d |  |
| 2 | 2 | **Создание интерфейса** | 110.32d | 2024-03-01 09:00 | 2024-08-13 11:34 | 1 | 0d |  |
| 3 | 2.1 | **Разработка дизайна интерфейса** | 25.09d | 2024-03-01 09:00 | 2024-04-08 09:43 |  | 70.23d |  |
| 4 |  | Разработка 2D графических элементов | 3w | 2024-03-01 09:00 | 2024-03-25 09:25 |  | 70.23d |  |
| 5 |  | Разработка 3D графических элементов | 2w | 2024-03-01 09:00 | 2024-03-18 09:17 | 4SS | 70.23d |  |
| 6 |  | Создание заставки | 3w | 2024-03-18 09:17 | 2024-04-08 09:43 | 5 | 70.23d |  |
| 7 |  | Программирование интерфейса | 3w | 2024-07-23 11:34 | 2024-08-13 11:34 | 3, 12 | 0d |  |
| 8 | 3 | **Построение базы объектов** | 85.04d | 2024-03-25 09:25 | 2024-07-30 09:43 |  | 40.39d |  |
| 9 |  | Анализ и построение структуры базы объектов | 2w | 2024-03-25 09:25 | 2024-04-08 09:43 |  | 40.39d |  |
| 10 |  | Программирование средств обработки базы объектов | 3w | 2024-04-08 09:43 | 2024-05-02 09:43 | 9 | 40.39d |  |
| 11 |  | Наполнение базы объектов | 12w | 2024-05-02 09:43 | 2024-07-30 09:43 | 10 | 40.39d |  |
| 12 | 4 | **Создание ядра GIS** | 95.32d | 2024-03-01 09:00 | 2024-07-23 11:34 |  | 0d |  |
| 13 |  | Анализ и проектирование ядра | 3w | 2024-03-01 09:00 | 2024-03-25 09:25 |  | 0d |  |
| 14 |  | Создание модели ядра | 5.02w | 2024-03-25 09:25 | 2024-05-02 10:08 | 13 | 0d |  |
| 15 |  | Тестирование модели ядра | 1w | 2024-05-02 10:08 | 2024-05-13 10:08 | 14 | 0d |  |
| 16 |  | Создание рабочей версии ядра | 10.04w | 2024-05-13 10:08 | 2024-07-23 11:34 | 15 | 0d |  |
| 17 |  | Создание мультимедиа – наполнения | 6w | 2024-04-08 09:43 | 2024-05-27 10:43 | 3 | 85.27d |  |
| 18 |  | Создание справочной системы | 2w | 2024-08-22 12:00 | 2024-09-05 12:17 | 7 | 13.07d |  |
| 19 | 7 | **Создание руководства пользователя** | 17.05d | 2024-07-30 11:34 | 2024-08-22 12:00 | 7FS-10d | 0d |  |
| 20 |  | Разработка дизайна руководства | 1w | 2024-07-30 11:34 | 2024-08-06 11:43 |  | 0d |  |
| 21 |  | Написание руководства пользователя | 3w | 2024-08-01 11:34 | 2024-08-22 12:00 | 20SS+2d | 0d |  |
| 22 | 8 | **Создание web – сайта и поддержка** | 23.09d | 2024-08-01 11:34 | 2024-09-03 12:17 |  | 0d |  |
| 23 |  | Разработка структуры сайта | 1d | 2024-08-01 11:34 | 2024-08-02 11:34 | 21SS | 0d |  |
| 24 |  | Разработка дизайна сайта | 1.4w | 2024-08-02 11:34 | 2024-08-13 11:51 | 23 | 0d |  |
| 25 |  | Наполнение сайта | 3w | 2024-08-13 11:51 | 2024-09-03 12:17 | 24 | 0d |  |
| 26 |  | Тестирование сайта | 4.01w | 2024-08-27 12:17 | 2024-09-24 12:52 | 22FS-1w | 0d |  |
| 27 |  | Сдача сайта в эксплуатацию | 0w | 2024-09-24 12:52 | 2024-09-24 12:52 | 26 | 0d |  |
| 28 | 11 | **Еженедельное совещание** | 133.02d | 2024-03-06 09:00 | 2024-09-18 09:08 |  | 4.47d |  |
| 29 |  | Еженедельное совещание 1 | 0.14h | 2024-03-06 09:00 | 2024-03-06 09:08 |  | 137.47d | start no earlier than 2024-03-06 09:00 |
| 30 |  | Еженедельное совещание 2 | 0.14h | 2024-03-13 09:00 | 2024-03-13 09:08 |  | 133.47d | start no earlier than 2024-03-13 09:00 |
| 31 |  | Еженедельное совещание 3 | 0.14h | 2024-03-20 09:00 | 2024-03-20 09:08 |  | 128.47d | start no earlier than 2024-03-20 09:00 |
| 32 |  | Еженедельное совещание 4 | 0.14h | 2024-03-27 09:00 | 2024-03-27 09:08 |  | 123.47d | start no earlier than 2024-03-27 09:00 |
| 33 |  | Еженедельное совещание 5 | 0.14h | 2024-04-03 09:00 | 2024-04-03 09:08 |  | 118.47d | start no earlier than 2024-04-03 09:00 |
| 34 |  | Еженедельное совещание 6 | 0.14h | 2024-04-10 09:00 | 2024-04-10 09:08 |  | 113.47d | start no earlier than 2024-04-10 09:00 |
| 35 |  | Еженедельное совещание 7 | 0.14h | 2024-04-17 09:00 | 2024-04-17 09:08 |  | 108.47d | start no earlier than 2024-04-17 09:00 |
| 36 |  | Еженедельное совещание 8 | 0.14h | 2024-04-24 09:00 | 2024-04-24 09:08 |  | 103.47d | start no earlier than 2024-04-24 09:00 |
| 37 |  | Еженедельное совещание 9 | 0.14h | 2024-05-02 09:00 | 2024-05-02 09:08 |  | 100.47d | start no earlier than 2024-05-01 09:00 |
| 38 |  | Еженедельное совещание 10 | 0.14h | 2024-05-08 09:00 | 2024-05-08 09:08 |  | 96.47d | start no earlier than 2024-05-08 09:00 |
| 39 |  | Еженедельное совещание 11 | 0.14h | 2024-05-15 09:00 | 2024-05-15 09:08 |  | 93.47d | start no earlier than 2024-05-15 09:00 |
| 40 |  | Еженедельное совещание 12 | 0.14h | 2024-05-22 09:00 | 2024-05-22 09:08 |  | 88.47d | start no earlier than 2024-05-22 09:00 |
| 41 |  | Еженедельное совещание 13 | 0.14h | 2024-05-29 09:00 | 2024-05-29 09:08 |  | 83.47d | start no earlier than 2024-05-29 09:00 |
| 42 |  | Еженедельное совещание 14 | 0.14h | 2024-06-05 09:00 | 2024-06-05 09:08 |  | 78.47d | start no earlier than 2024-06-05 09:00 |
| 43 |  | Еженедельное совещание 15 | 0.14h | 2024-06-13 09:00 | 2024-06-13 09:08 |  | 73.47d | start no earlier than 2024-06-12 09:00 |
| 44 |  | Еженедельное совещание 16 | 0.14h | 2024-06-19 09:00 | 2024-06-19 09:08 |  | 69.47d | start no earlier than 2024-06-19 09:00 |
| 45 |  | Еженедельное совещание 17 | 0.14h | 2024-06-26 09:00 | 2024-06-26 09:08 |  | 64.47d | start no earlier than 2024-06-26 09:00 |
| 46 |  | Еженедельное совещание 18 | 0.14h | 2024-07-03 09:00 | 2024-07-03 09:08 |  | 59.47d | start no earlier than 2024-07-03 09:00 |
| 47 |  | Еженедельное совещание 19 | 0.14h | 2024-07-10 09:00 | 2024-07-10 09:08 |  | 54.47d | start no earlier than 2024-07-10 09:00 |
| 48 |  | Еженедельное совещание 20 | 0.14h | 2024-07-17 09:00 | 2024-07-17 09:08 |  | 49.47d | start no earlier than 2024-07-17 09:00 |
| 49 |  | Еженедельное совещание 21 | 0.14h | 2024-07-24 09:00 | 2024-07-24 09:08 |  | 44.47d | start no earlier than 2024-07-24 09:00 |
| 50 |  | Еженедельное совещание 22 | 0.14h | 2024-07-31 09:00 | 2024-07-31 09:08 |  | 39.47d | start no earlier than 2024-07-31 09:00 |
| 51 |  | Еженедельное совещание 23 | 0.14h | 2024-08-07 09:00 | 2024-08-07 09:08 |  | 34.47d | start no earlier than 2024-08-07 09:00 |
| 52 |  | Еженедельное совещание 24 | 0.14h | 2024-08-14 09:00 | 2024-08-14 09:08 |  | 29.47d | start no earlier than 2024-08-14 09:00 |
| 53 |  | Еженедельное совещание 25 | 0.14h | 2024-08-21 09:00 | 2024-08-21 09:08 |  | 24.47d | start no earlier than 2024-08-21 09:00 |
| 54 |  | Еженедельное совещание 26 | 0.14h | 2024-08-28 09:00 | 2024-08-28 09:08 |  | 19.47d | start no earlier than 2024-08-28 09:00 |
| 55 |  | Еженедельное совещание 27 | 0.14h | 2024-09-04 09:00 | 2024-09-04 09:08 |  | 14.47d | start no earlier than 2024-09-04 09:00 |
| 56 |  | Еженедельное совещание 28 | 0.14h | 2024-09-11 09:00 | 2024-09-11 09:08 |  | 9.47d | start no earlier than 2024-09-11 09:00 |
| 57 |  | Еженедельное совещание 29 | 0.14h | 2024-09-18 09:00 | 2024-09-18 09:08 |  | 4.47d | start no earlier than 2024-09-18 09:00 |

## Version 2 (saved 2024-03-05)

Note of the change: fixed and defended

Last finish 2024-09-24 → 2024-09-27 (+3d).

Added:

| ID | Task | Duration | Start | Finish | Constraint | Resources |
| --- | --- | --- | --- | --- | --- | --- |
| 28 | **Еженедельные совещания** | 133.12d | 2024-03-06 09:00 | 2024-09-18 10:00 |  |  |
| 30 | Еженедельные совещания 2 | 1h | 2024-03-13 09:00 | 2024-03-13 10:00 | start no earlier than 2024-03-13 09:00 | 3D аниматор; Web-дизайнер; Ведущий программист; Мультимедиа-корреспондент; Системный аналитик; Технический писатель; Художник-дизайнер |
| 31 | Еженедельные совещания 3 | 1h | 2024-03-20 09:00 | 2024-03-20 10:00 | start no earlier than 2024-03-20 09:00 | 3D аниматор; Web-дизайнер; Ведущий программист; Мультимедиа-корреспондент; Системный аналитик; Технический писатель; Художник-дизайнер |
| 32 | Еженедельные совещания 4 | 1h | 2024-03-27 09:00 | 2024-03-27 10:00 | start no earlier than 2024-03-27 09:00 | 3D аниматор; Web-дизайнер; Ведущий программист; Мультимедиа-корреспондент; Системный аналитик; Технический писатель; Художник-дизайнер |
| 33 | Еженедельные совещания 5 | 1h | 2024-04-03 09:00 | 2024-04-03 10:00 | start no earlier than 2024-04-03 09:00 | 3D аниматор; Web-дизайнер; Ведущий программист; Мультимедиа-корреспондент; Системный аналитик; Технический писатель; Художник-дизайнер |
| 34 | Еженедельные совещания 6 | 1h | 2024-04-10 09:00 | 2024-04-10 10:00 | start no earlier than 2024-04-10 09:00 | 3D аниматор; Web-дизайнер; Ведущий программист; Мультимедиа-корреспондент; Системный аналитик; Технический писатель; Художник-дизайнер |
| 35 | Еженедельные совещания 7 | 1h | 2024-04-17 09:00 | 2024-04-17 10:00 | start no earlier than 2024-04-17 09:00 | 3D аниматор; Web-дизайнер; Ведущий программист; Мультимедиа-корреспондент; Системный аналитик; Технический писатель; Художник-дизайнер |
| 36 | Еженедельные совещания 8 | 1h | 2024-04-24 09:00 | 2024-04-24 10:00 | start no earlier than 2024-04-24 09:00 | 3D аниматор; Web-дизайнер; Ведущий программист; Мультимедиа-корреспондент; Системный аналитик; Технический писатель; Художник-дизайнер |
| 37 | Еженедельные совещания 9 | 1h | 2024-05-02 09:00 | 2024-05-02 10:00 | start no earlier than 2024-05-01 09:00 | 3D аниматор; Web-дизайнер; Ведущий программист; Мультимедиа-корреспондент; Системный аналитик; Технический писатель; Художник-дизайнер |
| 38 | Еженедельные совещания 10 | 1h | 2024-05-08 09:00 | 2024-05-08 10:00 | start no earlier than 2024-05-08 09:00 | 3D аниматор; Web-дизайнер; Ведущий программист; Мультимедиа-корреспондент; Системный аналитик; Технический писатель; Художник-дизайнер |
| 39 | Еженедельные совещания 11 | 1h | 2024-05-15 09:00 | 2024-05-15 10:00 | start no earlier than 2024-05-15 09:00 | 3D аниматор; Web-дизайнер; Ведущий программист; Мультимедиа-корреспондент; Системный аналитик; Технический писатель; Художник-дизайнер |
| 40 | Еженедельные совещания 12 | 1h | 2024-05-22 09:00 | 2024-05-22 10:00 | start no earlier than 2024-05-22 09:00 | 3D аниматор; Web-дизайнер; Ведущий программист; Мультимедиа-корреспондент; Системный аналитик; Технический писатель; Художник-дизайнер |
| 41 | Еженедельные совещания 13 | 1h | 2024-05-29 09:00 | 2024-05-29 10:00 | start no earlier than 2024-05-29 09:00 | 3D аниматор; Web-дизайнер; Ведущий программист; Мультимедиа-корреспондент; Системный аналитик; Технический писатель; Художник-дизайнер |
| 42 | Еженедельные совещания 14 | 1h | 2024-06-05 09:00 | 2024-06-05 10:00 | start no earlier than 2024-06-05 09:00 | 3D аниматор; Web-дизайнер; Ведущий программист; Мультимедиа-корреспондент; Системный аналитик; Технический писатель; Художник-дизайнер |
| 43 | Еженедельные совещания 15 | 1h | 2024-06-13 09:00 | 2024-06-13 10:00 | start no earlier than 2024-06-12 09:00 | 3D аниматор; Web-дизайнер; Ведущий программист; Мультимедиа-корреспондент; Системный аналитик; Технический писатель; Художник-дизайнер |
| 44 | Еженедельные совещания 16 | 1h | 2024-06-19 09:00 | 2024-06-19 10:00 | start no earlier than 2024-06-19 09:00 | 3D аниматор; Web-дизайнер; Ведущий программист; Мультимедиа-корреспондент; Системный аналитик; Технический писатель; Художник-дизайнер |
| 45 | Еженедельные совещания 17 | 1h | 2024-06-26 09:00 | 2024-06-26 10:00 | start no earlier than 2024-06-26 09:00 | 3D аниматор; Web-дизайнер; Ведущий программист; Мультимедиа-корреспондент; Системный аналитик; Технический писатель; Художник-дизайнер |
| 46 | Еженедельные совещания 18 | 1h | 2024-07-03 09:00 | 2024-07-03 10:00 | start no earlier than 2024-07-03 09:00 | 3D аниматор; Web-дизайнер; Ведущий программист; Мультимедиа-корреспондент; Системный аналитик; Технический писатель; Художник-дизайнер |
| 47 | Еженедельные совещания 19 | 1h | 2024-07-10 09:00 | 2024-07-10 10:00 | start no earlier than 2024-07-10 09:00 | 3D аниматор; Web-дизайнер; Ведущий программист; Мультимедиа-корреспондент; Системный аналитик; Технический писатель; Художник-дизайнер |
| 48 | Еженедельные совещания 20 | 1h | 2024-07-17 09:00 | 2024-07-17 10:00 | start no earlier than 2024-07-17 09:00 | 3D аниматор; Web-дизайнер; Ведущий программист; Мультимедиа-корреспондент; Системный аналитик; Технический писатель; Художник-дизайнер |
| 49 | Еженедельные совещания 21 | 1h | 2024-07-24 09:00 | 2024-07-24 10:00 | start no earlier than 2024-07-24 09:00 | 3D аниматор; Web-дизайнер; Ведущий программист; Мультимедиа-корреспондент; Системный аналитик; Технический писатель; Художник-дизайнер |
| 50 | Еженедельные совещания 22 | 1h | 2024-07-31 09:00 | 2024-07-31 10:00 | start no earlier than 2024-07-31 09:00 | 3D аниматор; Web-дизайнер; Ведущий программист; Мультимедиа-корреспондент; Системный аналитик; Технический писатель; Художник-дизайнер |
| 51 | Еженедельные совещания 23 | 1h | 2024-08-07 09:00 | 2024-08-07 10:00 | start no earlier than 2024-08-07 09:00 | 3D аниматор; Web-дизайнер; Ведущий программист; Мультимедиа-корреспондент; Системный аналитик; Технический писатель; Художник-дизайнер |
| 52 | Еженедельные совещания 24 | 1h | 2024-08-14 09:00 | 2024-08-14 10:00 | start no earlier than 2024-08-14 09:00 | 3D аниматор; Web-дизайнер; Ведущий программист; Мультимедиа-корреспондент; Системный аналитик; Технический писатель; Художник-дизайнер |
| 53 | Еженедельные совещания 25 | 1h | 2024-08-21 09:00 | 2024-08-21 10:00 | start no earlier than 2024-08-21 09:00 | 3D аниматор; Web-дизайнер; Ведущий программист; Мультимедиа-корреспондент; Системный аналитик; Технический писатель; Художник-дизайнер |
| 54 | Еженедельные совещания 26 | 1h | 2024-08-28 09:00 | 2024-08-28 10:00 | start no earlier than 2024-08-28 09:00 | 3D аниматор; Web-дизайнер; Ведущий программист; Мультимедиа-корреспондент; Системный аналитик; Технический писатель; Художник-дизайнер |
| 55 | Еженедельные совещания 27 | 1h | 2024-09-04 09:00 | 2024-09-04 10:00 | start no earlier than 2024-09-04 09:00 | 3D аниматор; Web-дизайнер; Ведущий программист; Мультимедиа-корреспондент; Системный аналитик; Технический писатель; Художник-дизайнер |
| 56 | Еженедельные совещания 28 | 1h | 2024-09-11 09:00 | 2024-09-11 10:00 | start no earlier than 2024-09-11 09:00 | 3D аниматор; Web-дизайнер; Ведущий программист; Мультимедиа-корреспондент; Системный аналитик; Технический писатель; Художник-дизайнер |
| 57 | Еженедельные совещания 29 | 1h | 2024-09-18 09:00 | 2024-09-18 10:00 | start no earlier than 2024-09-18 09:00 | 3D аниматор; Web-дизайнер; Ведущий программист; Мультимедиа-корреспондент; Системный аналитик; Технический писатель; Художник-дизайнер |

Removed: 29 Еженедельное совещание 1; 30 Еженедельное совещание 2; 31 Еженедельное совещание 3; 32 Еженедельное совещание 4; 33 Еженедельное совещание 5; 34 Еженедельное совещание 6; 35 Еженедельное совещание 7; 36 Еженедельное совещание 8; 37 Еженедельное совещание 9; 38 Еженедельное совещание 10; 39 Еженедельное совещание 11; 40 Еженедельное совещание 12; 41 Еженедельное совещание 13; 42 Еженедельное совещание 14; 43 Еженедельное совещание 15; 44 Еженедельное совещание 16; 45 Еженедельное совещание 17; 46 Еженедельное совещание 18; 47 Еженедельное совещание 19; 48 Еженедельное совещание 20; 49 Еженедельное совещание 21; 50 Еженедельное совещание 22; 51 Еженедельное совещание 23; 52 Еженедельное совещание 24; 53 Еженедельное совещание 25; 54 Еженедельное совещание 26; 55 Еженедельное совещание 27; 56 Еженедельное совещание 28; 57 Еженедельное совещание 29

Changed:

| ID | Task | Start | Finish | Duration | Total float | Other |
| --- | --- | --- | --- | --- | --- | --- |
| 2 | **Создание интерфейса** |  | 2024-08-13 11:34 → 2024-08-15 13:00 (+2d) | 110.32d → 112.5d |  |  |
| 3 | **Разработка дизайна интерфейса** |  | 2024-04-08 09:43 → 2024-04-08 15:00 | 25.09d → 25.62d | 70.23d → 71.88d |  |
| 4 | Разработка 2D графических элементов |  | 2024-03-25 09:25 → 2024-03-25 12:00 |  | 70.23d → 71.88d |  |
| 5 | Разработка 3D графических элементов |  | 2024-03-18 09:17 → 2024-03-18 11:00 |  | 70.23d → 71.88d |  |
| 6 | Создание заставки | 2024-03-18 09:17 → 2024-03-18 11:00 | 2024-04-08 09:43 → 2024-04-08 15:00 |  | 70.23d → 71.88d |  |
| 7 | Программирование интерфейса | 2024-07-23 11:34 → 2024-07-25 14:00 (+2d) | 2024-08-13 11:34 → 2024-08-15 13:00 (+2d) |  |  |  |
| 8 | **Построение базы объектов** | 2024-03-25 09:25 → 2024-03-25 12:00 | 2024-07-30 09:43 → 2024-07-30 15:00 | 85.04d → 85.25d | 40.39d → 42.88d |  |
| 9 | Анализ и построение структуры базы объектов | 2024-03-25 09:25 → 2024-03-25 12:00 | 2024-04-08 09:43 → 2024-04-08 15:00 |  | 40.39d → 42.88d |  |
| 10 | Программирование средств обработки базы объектов | 2024-04-08 09:43 → 2024-04-08 15:00 | 2024-05-02 09:43 → 2024-05-02 15:00 |  | 40.39d → 42.88d |  |
| 11 | Наполнение базы объектов | 2024-05-02 09:43 → 2024-05-02 15:00 | 2024-07-30 09:43 → 2024-07-30 15:00 |  | 40.39d → 42.88d |  |
| 12 | **Создание ядра GIS** |  | 2024-07-23 11:34 → 2024-07-25 13:00 (+2d) | 95.32d → 97.5d |  |  |
| 13 | Анализ и проектирование ядра |  | 2024-03-25 09:25 → 2024-03-25 12:00 |  |  |  |
| 14 | Создание модели ядра | 2024-03-25 09:25 → 2024-03-25 12:00 | 2024-05-02 10:08 → 2024-05-03 10:00 (+1d) | 5.02w → 5.15w |  |  |
| 15 | Тестирование модели ядра | 2024-05-02 10:08 → 2024-05-03 10:00 (+1d) | 2024-05-13 10:08 → 2024-05-14 10:00 (+1d) |  |  |  |
| 16 | Создание рабочей версии ядра | 2024-05-13 10:08 → 2024-05-14 10:00 (+1d) | 2024-07-23 11:34 → 2024-07-25 13:00 (+2d) | 10.04w → 10.28w |  |  |
| 17 | Создание мультимедиа – наполнения | 2024-04-08 09:43 → 2024-04-08 15:00 | 2024-05-27 10:43 → 2024-05-28 13:00 (+1d) |  | 85.27d → 87d |  |
| 18 | Создание справочной системы | 2024-08-22 12:00 → 2024-08-26 17:00 (+4d) | 2024-09-05 12:17 → 2024-09-10 10:00 (+5d) |  | 13.07d → 13.38d |  |
| 19 | **Создание руководства пользователя** | 2024-07-30 11:34 → 2024-08-01 14:00 (+2d) | 2024-08-22 12:00 → 2024-08-26 17:00 (+4d) | 17.05d → 17.38d |  |  |
| 20 | Разработка дизайна руководства | 2024-07-30 11:34 → 2024-08-01 14:00 (+2d) | 2024-08-06 11:43 → 2024-08-08 15:00 (+2d) |  |  |  |
| 21 | Написание руководства пользователя | 2024-08-01 11:34 → 2024-08-05 14:00 (+4d) | 2024-08-22 12:00 → 2024-08-26 17:00 (+4d) |  |  |  |
| 22 | **Создание web – сайта и поддержка** | 2024-08-01 11:34 → 2024-08-05 14:00 (+4d) | 2024-09-03 12:17 → 2024-09-06 10:00 (+3d) | 23.09d → 23.62d |  |  |
| 23 | Разработка структуры сайта | 2024-08-01 11:34 → 2024-08-05 14:00 (+4d) | 2024-08-02 11:34 → 2024-08-06 13:00 (+4d) |  |  |  |
| 24 | Разработка дизайна сайта | 2024-08-02 11:34 → 2024-08-06 14:00 (+4d) | 2024-08-13 11:51 → 2024-08-15 16:00 (+2d) |  |  |  |
| 25 | Наполнение сайта | 2024-08-13 11:51 → 2024-08-15 16:00 (+2d) | 2024-09-03 12:17 → 2024-09-06 10:00 (+3d) |  |  |  |
| 26 | Тестирование сайта | 2024-08-27 12:17 → 2024-08-30 10:00 (+3d) | 2024-09-24 12:52 → 2024-09-27 13:00 (+3d) | 4.01w → 4.08w |  |  |
| 27 | Сдача сайта в эксплуатацию | 2024-09-24 12:52 → 2024-09-27 13:00 (+3d) | 2024-09-24 12:52 → 2024-09-27 13:00 (+3d) |  |  |  |
| 29 | Еженедельные совещания 1 |  | 2024-09-18 09:08 → 2024-03-06 10:00 (-196d) | 133.02d → 1h | 4.47d → none | was named Еженедельное совещание; constraint none → start no earlier than 2024-03-06 09:00; resources none → 3D аниматор; Web-дизайнер; Ведущий программист; Мультимедиа-корреспондент; Системный аналитик; Технический писатель; Художник-дизайнер |

## Version 3 (saved 2024-03-17)

Note of the change: fixed lab_03

Last finish stays 2024-09-27.

Changed:

| ID | Task | Start | Finish | Duration |
| --- | --- | --- | --- | --- |
| 22 | **Создание web – сайта и поддержка** |  | 2024-09-06 10:00 → 2024-09-06 13:00 | 23.62d → 24d |
| 25 | Наполнение сайта |  | 2024-09-06 10:00 → 2024-09-06 13:00 |  |
| 26 | Тестирование сайта | 2024-08-30 10:00 → 2024-08-30 14:00 | 2024-09-27 13:00 → 2024-09-27 17:00 |  |
| 27 | Сдача сайта в эксплуатацию | 2024-09-27 13:00 → 2024-09-27 17:00 | 2024-09-27 13:00 → 2024-09-27 17:00 |  |
