# ЛР №1

How a schedule from MS Project changed from version to version. A marks actual dates.

## Version 1 (data date 2024-04-25, saved 2024-03-24, file lab_05_01.mpp)

Note of the change: hz

| ID | WBS | Task | Duration | Start | Finish | Predecessors | Complete | Total float | Constraint |
| --- | --- | --- | --- | --- | --- | --- | --- | --- | --- |
| 1 |  | Начало проекта | 0d | 2024-03-01 09:00 A | 2024-03-01 09:00 A |  | 100% |  |  |
| 2 | 2 | **Создание интерфейса** | 80.53d | 2024-03-01 09:00 A | 2024-07-02 14:14 | 1 | 92% | 0d |  |
| 3 | 2.1 | **Разработка дизайна интерфейса** | 31d | 2024-03-01 09:00 A | 2024-04-15 18:00 A |  | 100% |  |  |
| 4 |  | Разработка 2D графических элементов | 3w | 2024-03-01 09:00 A | 2024-04-01 12:00 A |  | 100% |  |  |
| 5 |  | Разработка 3D графических элементов | 2w | 2024-03-01 09:00 A | 2024-03-18 11:00 A | 4SS | 100% |  |  |
| 6 |  | Создание заставки | 4.05w | 2024-03-18 11:00 A | 2024-04-15 18:00 A | 5 | 100% |  |  |
| 7 |  | Программирование интерфейса | 0.8w | 2024-06-26 12:43 | 2024-07-02 14:14 | 3, 12 |  | 0d |  |
| 8 | 3 | **Построение базы объектов** | 78.49d | 2024-04-01 09:00 A | 2024-07-26 12:54 |  | 23% | 4.21d |  |
| 9 |  | Анализ и построение структуры базы объектов | 2w | 2024-04-01 09:00 A | 2024-04-15 13:00 A |  | 100% |  |  |
| 10 |  | Программирование средств обработки базы объектов | 2.97w | 2024-04-15 14:00 A | 2024-05-16 12:54 | 9 | 50% | 4.21d |  |
| 11 |  | Наполнение базы объектов | 10w | 2024-05-16 12:54 | 2024-07-26 12:54 | 10 |  | 4.21d |  |
| 12 | 4 | **Создание ядра GIS** | 76.46d | 2024-03-01 09:00 A | 2024-06-26 12:43 |  | 53% | 0d |  |
| 13 |  | Анализ и проектирование ядра | 3.98w | 2024-03-01 09:00 A | 2024-04-01 12:00 A |  | 100% |  |  |
| 14 |  | Создание модели ядра | 3.4w | 2024-04-01 12:00 A | 2024-04-24 12:00 A | 13 | 100% |  |  |
| 15 |  | Тестирование модели ядра | 0.2w | 2024-04-24 12:00 A | 2024-04-25 12:00 A | 14 | 100% |  |  |
| 16 |  | Создание рабочей версии ядра | 6.94w | 2024-04-25 12:00 A | 2024-06-26 12:43 | 15 | 2% | 0d |  |
| 17 |  | Создание мультимедиа – наполнения | 6w | 2024-04-16 09:00 A | 2024-06-05 11:00 | 3 | 26% | 40.45d |  |
| 18 |  | Создание справочной системы | 2w | 2024-07-16 09:00 | 2024-07-31 15:46 | 7 |  | 0.98d |  |
| 19 | 7 | **Создание руководства пользователя** | 19.64d | 2024-06-18 14:14 | 2024-07-16 10:21 | 7FS-10d |  | 0d |  |
| 20 |  | Разработка дизайна руководства | 1w | 2024-06-18 14:14 | 2024-06-26 09:14 |  |  | 0d |  |
| 21 |  | Написание руководства пользователя | 3w | 2024-06-20 14:14 | 2024-07-16 10:21 | 20SS+2d |  | 0d |  |
| 22 | 8 | **Создание web – сайта и поддержка** | 27.14d | 2024-06-20 14:14 | 2024-07-29 15:19 |  |  | 0d |  |
| 23 |  | Разработка структуры сайта | 1d | 2024-06-20 14:14 | 2024-06-21 14:14 | 21SS |  | 0d |  |
| 24 |  | Разработка дизайна сайта | 1.53w | 2024-06-21 14:14 | 2024-07-03 16:49 | 23 |  | 0d |  |
| 25 |  | Наполнение сайта | 3w | 2024-07-03 16:49 | 2024-07-29 15:19 | 24 |  | 0d |  |
| 26 |  | Тестирование сайта | 1.61w | 2024-07-22 15:19 | 2024-08-01 15:34 | 22FS-1w |  | 0d |  |
| 27 |  | Сдача сайта в эксплуатацию | 0w | 2024-08-01 15:34 | 2024-08-01 15:34 | 26 |  | 0d |  |
| 28 | 11 | **Еженедельные совещания** | 98.12d | 2024-03-06 09:00 A | 2024-07-31 10:00 |  | 38% | 0d |  |
| 29 |  | Еженедельные совещания 1 | 1h | 2024-03-06 09:00 A | 2024-03-06 10:00 A |  | 100% |  | start no earlier than 2024-03-06 09:00 |
| 30 |  | Еженедельные совещания 2 | 1h | 2024-03-13 09:00 A | 2024-03-13 10:00 A |  | 100% |  | start no earlier than 2024-03-13 09:00 |
| 31 |  | Еженедельные совещания 3 | 1h | 2024-03-20 09:00 A | 2024-03-20 10:00 A |  | 100% |  | start no earlier than 2024-03-20 09:00 |
| 32 |  | Еженедельные совещания 4 | 1h | 2024-03-27 09:00 A | 2024-03-27 10:00 A |  | 100% |  | start no earlier than 2024-03-27 09:00 |
| 33 |  | Еженедельные совещания 5 | 1h | 2024-04-03 09:00 A | 2024-04-03 10:00 A |  | 100% |  | start no earlier than 2024-04-03 09:00 |
| 34 |  | Еженедельные совещания 6 | 1h | 2024-04-10 09:00 A | 2024-04-10 10:00 A |  | 100% |  | start no earlier than 2024-04-10 09:00 |
| 35 |  | Еженедельные совещания 7 | 1h | 2024-04-17 09:00 A | 2024-04-17 10:00 A |  | 100% |  | start no earlier than 2024-04-17 09:00 |
| 36 |  | Еженедельные совещания 8 | 1h | 2024-04-24 09:00 A | 2024-04-24 10:00 A |  | 100% |  | start no earlier than 2024-04-24 09:00 |
| 37 |  | Еженедельные совещания 9 | 1h | 2024-05-02 09:00 | 2024-05-02 10:00 |  |  |  | start no earlier than 2024-05-01 09:00 |
| 38 |  | Еженедельные совещания 10 | 1h | 2024-05-08 09:00 | 2024-05-08 10:00 |  |  |  | start no earlier than 2024-05-08 09:00 |
| 39 |  | Еженедельные совещания 11 | 1h | 2024-05-15 09:00 | 2024-05-15 10:00 |  |  |  | start no earlier than 2024-05-15 09:00 |
| 40 |  | Еженедельные совещания 12 | 1h | 2024-05-22 09:00 | 2024-05-22 10:00 |  |  |  | start no earlier than 2024-05-22 09:00 |
| 41 |  | Еженедельные совещания 13 | 1h | 2024-05-29 09:00 | 2024-05-29 10:00 |  |  |  | start no earlier than 2024-05-29 09:00 |
| 42 |  | Еженедельные совещания 14 | 1h | 2024-06-05 09:00 | 2024-06-05 10:00 |  |  |  | start no earlier than 2024-06-05 09:00 |
| 43 |  | Еженедельные совещания 15 | 1h | 2024-06-13 09:00 | 2024-06-13 10:00 |  |  |  | start no earlier than 2024-06-12 09:00 |
| 44 |  | Еженедельные совещания 16 | 1h | 2024-06-19 09:00 | 2024-06-19 10:00 |  |  |  | start no earlier than 2024-06-19 09:00 |
| 45 |  | Еженедельные совещания 18 | 1h | 2024-07-03 09:00 | 2024-07-03 10:00 |  |  |  | start no earlier than 2024-07-03 09:00 |
| 46 |  | Еженедельные совещания 19 | 1h | 2024-07-10 09:00 | 2024-07-10 10:00 |  |  |  | start no earlier than 2024-07-10 09:00 |
| 47 |  | Еженедельные совещания 20 | 1h | 2024-07-17 09:00 | 2024-07-17 10:00 |  |  |  | start no earlier than 2024-07-17 09:00 |
| 48 |  | Еженедельные совещания 21 | 1h | 2024-07-24 09:00 | 2024-07-24 10:00 |  |  |  | start no earlier than 2024-07-24 09:00 |
| 49 |  | Еженедельные совещания 22 | 1h | 2024-07-31 09:00 | 2024-07-31 10:00 |  |  |  | start no earlier than 2024-07-31 09:00 |

## Version 2 (saved 2024-03-24, file lab_05_03.mpp)

Note of the change: lab_05 almost done

Last finish 2024-08-01 → 2024-09-19 (+49d). Complete tasks 16 → 0.

Removed: 28 Еженедельные совещания; 29 Еженедельные совещания 1; 30 Еженедельные совещания 2; 31 Еженедельные совещания 3; 32 Еженедельные совещания 4; 33 Еженедельные совещания 5; 34 Еженедельные совещания 6; 35 Еженедельные совещания 7; 36 Еженедельные совещания 8; 37 Еженедельные совещания 9; 38 Еженедельные совещания 10; 39 Еженедельные совещания 11; 40 Еженедельные совещания 12; 41 Еженедельные совещания 13; 42 Еженедельные совещания 14; 43 Еженедельные совещания 15; 44 Еженедельные совещания 16; 45 Еженедельные совещания 18; 46 Еженедельные совещания 19; 47 Еженедельные совещания 20; 48 Еженедельные совещания 21; 49 Еженедельные совещания 22

Changed:

| ID | Task | Start | Finish | Duration | Complete | Total float | Other |
| --- | --- | --- | --- | --- | --- | --- | --- |
| 1 | Начало проекта | 2024-03-01 09:00 A → 2024-03-01 | 2024-03-01 09:00 A → 2024-03-01 |  | 100% → 0% | none → 70d | baseline start 2024-03-01 09:00 → 2024-03-01; baseline finish 2024-03-01 09:00 → 2024-03-01 |
| 2 | **Создание интерфейса** | 2024-03-01 09:00 A → 2024-03-01 | 2024-07-02 14:14 → 2024-08-12 (+41d) | 80.53d → 110d | 92% → 0% |  | baseline start 2024-03-01 09:00 → 2024-03-01; baseline finish 2024-07-01 11:07 → 2024-08-12 |
| 3 | **Разработка дизайна интерфейса** | 2024-03-01 09:00 A → 2024-03-01 | 2024-04-15 18:00 A → 2024-04-05 (-10d) | 31d → 25d | 100% → 0% | none → 70d | baseline start 2024-03-01 09:00 → 2024-03-01; baseline finish 2024-04-08 15:00 → 2024-04-05 |
| 4 | Разработка 2D графических элементов | 2024-03-01 09:00 A → 2024-03-01 | 2024-04-01 12:00 A → 2024-03-22 (-10d) |  | 100% → 0% | none → 70d | baseline start 2024-03-01 09:00 → 2024-03-01; baseline finish 2024-03-25 12:00 → 2024-03-22 |
| 5 | Разработка 3D графических элементов | 2024-03-01 09:00 A → 2024-03-01 | 2024-03-18 11:00 A → 2024-03-15 (-3d) |  | 100% → 0% | none → 70d | baseline start 2024-03-01 09:00 → 2024-03-01; baseline finish 2024-03-18 11:00 → 2024-03-15 |
| 6 | Создание заставки | 2024-03-18 11:00 A → 2024-03-18 | 2024-04-15 18:00 A → 2024-04-05 (-10d) | 4.05w → 3w | 100% → 0% | none → 70d | baseline start 2024-03-18 11:00 → 2024-03-18; baseline finish 2024-04-08 15:00 → 2024-04-05 |
| 7 | Программирование интерфейса | 2024-06-26 12:43 → 2024-07-23 (+27d) | 2024-07-02 14:14 → 2024-08-12 (+41d) | 0.8w → 3w |  |  | resources Программист#3; Программист#4; Ведущий программист; Программист#1; Программист#2; Программист#5; Программист#6; Программист#7 → Программист#3; Программист#4; baseline start 2024-06-20 17:08 → 2024-07-23; baseline finish 2024-07-01 11:07 → 2024-08-12 |
| 8 | **Построение базы объектов** | 2024-04-01 09:00 A → 2024-03-01 (-31d) | 2024-07-26 12:54 → 2024-07-08 (-18d) | 78.49d → 85d | 23% → 0% | 4.21d → 53d | baseline start 2024-03-25 12:00 → 2024-03-01; baseline finish 2024-07-31 15:00 → 2024-07-08 |
| 9 | Анализ и построение структуры базы объектов | 2024-04-01 09:00 A → 2024-03-01 (-31d) | 2024-04-15 13:00 A → 2024-03-15 (-31d) |  | 100% → 0% | none → 53d | baseline start 2024-03-25 12:00 → 2024-03-01; baseline finish 2024-04-08 15:00 → 2024-03-15 |
| 10 | Программирование средств обработки базы объектов | 2024-04-15 14:00 A → 2024-03-18 (-28d) | 2024-05-16 12:54 → 2024-04-05 (-41d) | 2.97w → 3w | 50% → 0% | 4.21d → 53d | resources Программист#3; Программист#4; Программист#5; Программист#6; Программист#7 → Программист#3; Программист#4; baseline start 2024-04-08 15:00 → 2024-03-18; baseline finish 2024-05-03 15:00 → 2024-04-05 |
| 11 | Наполнение базы объектов | 2024-05-16 12:54 → 2024-04-08 (-38d) | 2024-07-26 12:54 → 2024-07-08 (-18d) | 10w → 12w |  | 4.21d → 53d | resources Наборщик данных #1; Наборщик данных #2; Наборщик данных #3; Наборщик данных #4; Наборщик данных #5; Наборщик данных #6 → Наборщик данных #1; Наборщик данных #2; Наборщик данных #3; Наборщик данных #4; Наборщик данных #5; baseline start 2024-05-03 15:00 → 2024-04-08; baseline finish 2024-07-31 15:00 → 2024-07-08 |
| 12 | **Создание ядра GIS** | 2024-03-01 09:00 A → 2024-03-01 | 2024-06-26 12:43 → 2024-07-22 (+26d) | 76.46d → 95d | 53% → 0% |  | baseline start 2024-03-01 09:00 → 2024-03-01; baseline finish 2024-06-20 17:08 → 2024-07-22 |
| 13 | Анализ и проектирование ядра | 2024-03-01 09:00 A → 2024-03-01 | 2024-04-01 12:00 A → 2024-03-22 (-10d) | 3.98w → 3w | 100% → 0% | none → 0d | baseline start 2024-03-01 09:00 → 2024-03-01; baseline finish 2024-03-25 12:00 → 2024-03-22 |
| 14 | Создание модели ядра | 2024-04-01 12:00 A → 2024-03-25 (-7d) | 2024-04-24 12:00 A → 2024-04-26 (+2d) | 3.4w → 5w | 100% → 0% | none → 0d | resources Ведущий программист; Программист#1; Программист#2 → Ведущий программист; Программист#1; baseline start 2024-03-25 12:00 → 2024-03-25; baseline finish 2024-04-17 12:00 → 2024-04-26 |
| 15 | Тестирование модели ядра | 2024-04-24 12:00 A → 2024-05-02 (+8d) | 2024-04-25 12:00 A → 2024-05-08 (+13d) | 0.2w → 1w | 100% → 0% | none → 0d | resources Программист#1; Ведущий программист; Программист#2; Программист#3; Программист#4 → Программист#1; baseline start 2024-04-17 12:00 → 2024-05-02; baseline finish 2024-04-18 12:00 → 2024-05-08 |
| 16 | Создание рабочей версии ядра | 2024-04-25 12:00 A → 2024-05-13 (+18d) | 2024-06-26 12:43 → 2024-07-22 (+26d) | 6.94w → 10w | 2% → 0% |  | resources Ведущий программист; Программист#1; Программист#2; Программист#3; Программист#4; Программист#5; Программист#6; Программист#7 → Ведущий программист; Программист#1; Программист#2; baseline start 2024-04-18 12:00 → 2024-05-13; baseline finish 2024-06-20 17:08 → 2024-07-22 |
| 17 | Создание справочной системы | 2024-07-16 09:00 → 2024-08-13 (+28d) | 2024-07-31 15:46 → 2024-08-26 (+26d) |  |  | 0.98d → 0d | baseline start 2024-07-15 09:00 → 2024-08-13; baseline finish 2024-07-30 10:59 → 2024-08-26 |
| 18 | Создание мультимедиа – наполнения | 2024-04-16 09:00 A → 2024-04-08 (-8d) | 2024-06-05 11:00 → 2024-05-24 (-12d) |  | 26% → 0% | 40.45d → 0d | baseline start 2024-04-08 15:00 → 2024-04-08; baseline finish 2024-05-28 13:00 → 2024-05-24 |
| 19 | **Создание руководства пользователя** | 2024-06-18 14:14 → 2024-07-30 (+42d) | 2024-07-16 10:21 → 2024-08-21 (+36d) | 19.64d → 17d |  |  | baseline start 2024-06-17 11:07 → 2024-07-30; baseline finish 2024-07-11 15:07 → 2024-08-21 |
| 20 | Разработка дизайна руководства | 2024-06-18 14:14 → 2024-07-30 (+42d) | 2024-06-26 09:14 → 2024-08-05 (+40d) |  |  |  | baseline start 2024-06-17 11:07 → 2024-07-30; baseline finish 2024-06-24 14:07 → 2024-08-05 |
| 21 | Написание руководства пользователя | 2024-06-20 14:14 → 2024-08-01 (+42d) | 2024-07-16 10:21 → 2024-08-21 (+36d) |  |  |  | baseline start 2024-06-19 11:07 → 2024-08-01; baseline finish 2024-07-11 15:07 → 2024-08-21 |
| 22 | **Создание web – сайта и поддержка** | 2024-06-20 14:14 → 2024-08-01 (+42d) | 2024-07-29 15:19 → 2024-08-29 (+31d) | 27.14d → 21d |  |  | baseline start 2024-06-19 11:07 → 2024-08-01; baseline finish 2024-07-24 11:07 → 2024-08-29 |
| 23 | Разработка структуры сайта | 2024-06-20 14:14 → 2024-08-01 (+42d) | 2024-06-21 14:14 → 2024-08-01 (+41d) |  |  |  | baseline start 2024-06-19 11:07 → 2024-08-01; baseline finish 2024-06-20 11:07 → 2024-08-01 |
| 24 | Разработка дизайна сайта | 2024-06-21 14:14 → 2024-08-02 (+42d) | 2024-07-03 16:49 → 2024-08-08 (+36d) | 1.53w → 1w |  |  | baseline start 2024-06-20 11:07 → 2024-08-02; baseline finish 2024-07-01 17:07 → 2024-08-08 |
| 25 | Наполнение сайта | 2024-07-03 16:49 → 2024-08-09 (+37d) | 2024-07-29 15:19 → 2024-08-29 (+31d) |  |  |  | baseline start 2024-07-01 17:07 → 2024-08-09; baseline finish 2024-07-24 11:07 → 2024-08-29 |
| 26 | Тестирование сайта | 2024-07-22 15:19 → 2024-08-23 (+32d) | 2024-08-01 15:34 → 2024-09-19 (+49d) | 1.61w → 4w |  |  | resources Ведущий программист; Программист#1; Программист#2; Программист#3; Программист#4; Программист#5; Программист#6; Программист#7 → Ведущий программист; Программист#1; Программист#2; baseline start 2024-07-17 11:07 → 2024-08-23; baseline finish 2024-08-02 16:19 → 2024-09-19 |
| 27 | Сдача сайта в эксплуатацию | 2024-08-01 15:34 → 2024-09-19 (+49d) | 2024-08-01 15:34 → 2024-09-19 (+49d) |  |  |  | baseline start 2024-08-02 16:19 → 2024-09-19; baseline finish 2024-08-02 16:19 → 2024-09-19 |

## Version 3 (saved 2024-03-25, file lab_05_03.mpp)

Note of the change: lab_05 done

Last finish 2024-09-19 → 2024-09-18 (-1d).

Added:

| ID | Task | Duration | Start | Finish | Resources |
| --- | --- | --- | --- | --- | --- |
| 19 | Создание мультимедиа-наполнения | 6w | 2024-04-27 | 2024-06-14 | Мультимедиа-корреспондент |

Removed: 18 Создание мультимедиа – наполнения; 19 Создание руководства пользователя; 22 Создание web – сайта и поддержка

Changed:

| ID | Task | Start | Finish | Duration | Total float | Predecessors | Other |
| --- | --- | --- | --- | --- | --- | --- | --- |
| 1 | Начало проекта |  |  | 0d → 0w | 70d → none |  | baseline start 2024-03-01 → none; baseline finish 2024-03-01 → none |
| 2 | **Проектирование** |  | 2024-08-12 → 2024-04-26 (-108d) | 110d → 40d |  |  | was named Создание интерфейса; baseline start 2024-03-01 → none; baseline finish 2024-08-12 → none |
| 3 | **Разработка дизайна интерфейса** |  |  |  | 70d → 15d |  | baseline start 2024-03-01 → none; baseline finish 2024-04-05 → none |
| 4 | Разработка 2D графических элементов |  |  |  | 70d → 15d |  | baseline start 2024-03-01 → none; baseline finish 2024-03-22 → none |
| 5 | Разработка 3D графических элементов |  |  |  | 70d → 15d |  | baseline start 2024-03-01 → none; baseline finish 2024-03-15 → none |
| 6 | Создание заставки |  |  |  | 70d → 15d |  | baseline start 2024-03-18 → none; baseline finish 2024-04-05 → none |
| 7 | Разработка структуры сайта | 2024-08-01 → 2024-03-01 (-153d) | 2024-08-01 → 2024-03-01 (-153d) |  | 0d → 34d | 20SS → none | baseline start 2024-08-01 → none; baseline finish 2024-08-01 → none |
| 8 | Разработка дизайна сайта | 2024-08-02 → 2024-03-04 (-151d) | 2024-08-08 → 2024-03-11 (-150d) |  | 0d → 34d |  | resources 3D аниматор; Web-дизайнер; Художник-дизайнер → Web-дизайнер; Художник-дизайнер; 3D аниматор; baseline start 2024-08-02 → none; baseline finish 2024-08-08 → none |
| 9 | Анализ и проектирование ядра |  |  |  |  |  | baseline start 2024-03-01 → none; baseline finish 2024-03-22 → none |
| 10 | Создание модели ядра |  |  |  |  |  | resources Ведущий программист; Программист#1 → Программист №1; Ведущий программист; baseline start 2024-03-25 → none; baseline finish 2024-04-26 → none |
| 11 | Анализ и построение структуры базы объектов |  |  |  | 53d → 30d |  | resources Системный аналитик → Системный аналитик; Дополнительный сервер; baseline start 2024-03-01 → none; baseline finish 2024-03-15 → none |
| 12 | Разработка дизайна руководства | 2024-07-30 → 2024-03-01 (-151d) | 2024-08-05 → 2024-03-07 (-151d) |  | 0d → 35d |  | baseline start 2024-07-30 → none; baseline finish 2024-08-05 → none |
| 13 | **Кодирование** | 2024-03-01 → 2024-04-26 (+56d) | 2024-07-08 → 2024-08-22 (+45d) | 85d → 78d | 53d → 0d | none → 2 | was named Построение базы объектов; resources Дополнительный сервер → none; baseline start 2024-03-01 → none; baseline finish 2024-07-08 → none |
| 14 | Программирование средств обработки базы объектов | 2024-03-18 → 2024-04-26 (+39d) | 2024-04-05 → 2024-05-23 (+48d) | 3w → 12.43w | 53d → 0d | 11 → none | resources Программист#3; Программист#4 → Программист №3; Программист №4; Дополнительный сервер; baseline start 2024-03-18 → none; baseline finish 2024-04-05 → none |
| 15 | Наполнение базы объектов | 2024-04-08 → 2024-05-23 (+45d) | 2024-07-08 → 2024-08-22 (+45d) | 12w → 54.23w | 53d → 0d |  | resources Наборщик данных #1; Наборщик данных #2; Наборщик данных #3; Наборщик данных #4; Наборщик данных #5 → Наборщик данных №3; Наборщик данных №4; Набощик данных №5; Наборщик данных №1; Наборщик данных №2; Дополнительный сервер; baseline start 2024-04-08 → none; baseline finish 2024-07-08 → none |
| 16 | Создание рабочей версии ядра | 2024-05-13 → 2024-04-27 (-16d) | 2024-07-22 → 2024-07-12 (-10d) |  | 0d → 3d | 23 → none | resources Ведущий программист; Программист#1; Программист#2 → Программист №2; Ведущий программист; Программист №1; baseline start 2024-05-13 → none; baseline finish 2024-07-22 → none |
| 17 | Программирование интерфейса | 2024-07-23 → 2024-07-15 (-8d) | 2024-08-12 → 2024-08-02 (-10d) |  | 0d → 3d | 3, 22 → 16 | resources Программист#3; Программист#4 → Программист №4; Программист №3; baseline start 2024-07-23 → none; baseline finish 2024-08-12 → none |
| 18 | Создание справочной системы | 2024-08-13 → 2024-08-05 (-8d) | 2024-08-26 → 2024-08-16 (-10d) |  | 0d → 3d |  | baseline start 2024-08-13 → none; baseline finish 2024-08-26 → none |
| 20 | Написание руководства пользователя | 2024-08-01 → 2024-04-27 (-96d) | 2024-08-21 → 2024-05-23 (-90d) |  | 0d → 63d | 12SS+2d → none | baseline start 2024-08-01 → none; baseline finish 2024-08-21 → none |
| 21 | Наполнение сайта | 2024-08-09 → 2024-04-27 (-104d) | 2024-08-29 → 2024-05-23 (-98d) |  | 0d → 63d | 8 → none | baseline start 2024-08-09 → none; baseline finish 2024-08-29 → none |
| 22 | **Тестирование** | 2024-03-01 → 2024-08-22 (+174d) | 2024-07-22 → 2024-09-18 (+58d) | 95d → 20d |  | none → 13 | was named Создание ядра GIS; baseline start 2024-03-01 → none; baseline finish 2024-07-22 → none |
| 23 | Тестирование модели ядра | 2024-05-02 → 2024-08-22 (+112d) | 2024-05-08 → 2024-08-28 (+112d) |  | 0d → 15d | 10 → none | resources Программист#1 → Программист №1; baseline start 2024-05-02 → none; baseline finish 2024-05-08 → none |
| 24 | Тестирование сайта | 2024-08-23 → 2024-08-22 (-1d) | 2024-09-19 → 2024-09-18 (-1d) |  |  | Создание web – сайта и поддержкаFS-1w → none | resources Ведущий программист; Программист#1; Программист#2 → Ведущий программист; Программист №1; Программист №2; baseline start 2024-08-23 → none; baseline finish 2024-09-19 → none |
| 25 | Сдача сайта в эксплуатацию | 2024-09-19 → 2024-09-18 (-1d) | 2024-09-19 → 2024-09-18 (-1d) |  |  | 24 → 22 | baseline start 2024-09-19 → none; baseline finish 2024-09-19 → none |

## Version 4 (saved 2024-03-27, file lab_05_03.mpp)

Note of the change: hz

Last finish 2024-09-18 → 2024-09-13 (-5d).

Changed:

| ID | Task | Start | Finish | Duration | Total float |
| --- | --- | --- | --- | --- | --- |
| 13 | **Кодирование** | 2024-04-26 → 2024-04-27 (+1d) | 2024-08-22 → 2024-08-16 (-6d) | 78d → 75d |  |
| 14 | Программирование средств обработки базы объектов | 2024-04-26 → 2024-04-27 (+1d) |  | 12.43w → 3w | 0d → none |
| 15 | Наполнение базы объектов | 2024-05-23 → 2024-05-24 (+1d) | 2024-08-22 → 2024-08-16 (-6d) | 54.23w → 12w | 0d → none |
| 22 | **Тестирование** | 2024-08-22 → 2024-08-19 (-3d) | 2024-09-18 → 2024-09-13 (-5d) |  |  |
| 23 | Тестирование модели ядра | 2024-08-22 → 2024-08-19 (-3d) | 2024-08-28 → 2024-08-23 (-5d) |  |  |
| 24 | Тестирование сайта | 2024-08-22 → 2024-08-19 (-3d) | 2024-09-18 → 2024-09-13 (-5d) |  |  |
| 25 | Сдача сайта в эксплуатацию | 2024-09-18 → 2024-09-13 (-5d) | 2024-09-18 → 2024-09-13 (-5d) |  |  |
