# РК

How a schedule from MS Project changed from version to version. A marks actual dates.

## Version 1 (saved 2024-03-26, file rk_02.mpp)

Note of the change: rk done

| ID | Task | Duration | Start | Finish | Total float |
| --- | --- | --- | --- | --- | --- |
| 1 | Начало проекта | 0w | 2024-04-01 | 2024-04-01 | 20d |
| 2 | Установка ПО | 15d | 2024-04-01 | 2024-04-19 | 5d |
| 3 | Обучение персонала | 20d | 2024-04-01 | 2024-04-26 | 0d |
| 4 | Разработка представительских сайтов | 1d | 2024-04-01 | 2024-04-01 | 19d |
| 5 | Разработка сайта 1 | 5d | 2024-04-01 | 2024-04-05 | 15d |
| 6 | Разработка сайта 2 | 5d | 2024-04-01 | 2024-04-05 | 15d |
| 7 | Представительские сайты созданы | 0d | 2024-04-01 | 2024-04-01 | 20d |
| 8 | Разработка корпоративного сайта | 1d | 2024-04-01 | 2024-04-01 | 19d |
| 9 | Проектирование сайта | 5d | 2024-04-01 | 2024-04-05 | 15d |
| 10 | Программирование сайта | 15d | 2024-04-01 | 2024-04-19 | 5d |
| 11 | Наполнение сайта | 3d | 2024-04-01 | 2024-04-03 | 17d |
| 12 | Тестирование сайта | 5d | 2024-04-01 | 2024-04-05 | 15d |
| 13 | Сдача сайта заказчику | 0d | 2024-04-01 | 2024-04-01 | 20d |

## Version 2 (saved 2024-03-26, file rk_03.mpp)

Note of the change: rk done

Last finish stays 2024-04-26.

Changed:

| ID | Task | Finish | Duration | Total float |
| --- | --- | --- | --- | --- |
| 4 | **Разработка представительских сайтов** | 2024-04-01 → 2024-04-05 (+4d) | 1d → 5d | 19d → 15d |
| 8 | **Разработка корпоративного сайта** | 2024-04-01 → 2024-04-19 (+18d) | 1d → 15d | 19d → 5d |

## Version 3 (saved 2024-03-26, file rk_04.mpp)

Note of the change: rk done

Last finish 2024-04-26 → 2024-06-25 (+60d).

Changed:

| ID | Task | Start | Finish | Duration | Total float | Predecessors |
| --- | --- | --- | --- | --- | --- | --- |
| 2 | Установка ПО | 2024-04-01 → 2024-04-02 (+1d) | 2024-04-19 → 2024-04-22 (+3d) |  | 5d → 0d | none → 1FS+1d |
| 3 | Обучение персонала | 2024-04-01 → 2024-04-16 (+15d) | 2024-04-26 → 2024-05-20 (+24d) |  |  | none → 2SS+10d |
| 4 | **Разработка представительских сайтов** | 2024-04-01 → 2024-05-21 (+50d) | 2024-04-05 → 2024-05-30 (+55d) | 5d → 8d | 15d → 17d | none → 3 |
| 5 | Разработка сайта 1 | 2024-04-01 → 2024-05-21 (+50d) | 2024-04-05 → 2024-05-27 (+52d) |  | 15d → 17d |  |
| 6 | Разработка сайта 2 | 2024-04-01 → 2024-05-24 (+53d) | 2024-04-05 → 2024-05-30 (+55d) |  | 15d → 17d | none → 5FS-2d |
| 7 | Представительские сайты созданы | 2024-04-01 → 2024-05-30 (+59d) | 2024-04-01 → 2024-05-30 (+59d) |  | 20d → 17d | none → 4 |
| 8 | **Разработка корпоративного сайта** | 2024-04-01 → 2024-05-21 (+50d) | 2024-04-19 → 2024-06-25 (+67d) | 15d → 25d | 5d → 0d | none → 3 |
| 9 | Проектирование сайта | 2024-04-01 → 2024-05-21 (+50d) | 2024-04-05 → 2024-05-27 (+52d) |  | 15d → 0d |  |
| 10 | Программирование сайта | 2024-04-01 → 2024-05-28 (+57d) | 2024-04-19 → 2024-06-18 (+60d) |  | 5d → 0d | none → 9 |
| 11 | Наполнение сайта | 2024-04-01 → 2024-06-14 (+74d) | 2024-04-03 → 2024-06-18 (+76d) |  | 17d → 0d | none → 10FS-3d |
| 12 | Тестирование сайта | 2024-04-01 → 2024-06-19 (+79d) | 2024-04-05 → 2024-06-25 (+81d) |  | 15d → 0d | none → 11 |
| 13 | Сдача сайта заказчику | 2024-04-01 → 2024-06-25 (+85d) | 2024-04-01 → 2024-06-25 (+85d) |  | 20d → 0d | none → 12 |

## Version 4 (saved 2024-03-26, file rk_05.mpp)

Note of the change: rk done

Last finish stays 2024-06-25.

Changed:

| ID | Task | Other |
| --- | --- | --- |
| 3 | Обучение персонала | resources none → Преподаватели [400%]; Соломин; Тимофеев; Петров; Кузнецов; Яковлева; Фомина |

## Version 5 (saved 2024-03-26, file rk_06.mpp)

Note of the change: rk done

Last finish stays 2024-06-25.

Changed:

| ID | Task | Other |
| --- | --- | --- |
| 2 | Установка ПО | resources none → ПО; Соколов |
| 3 | Обучение персонала | resources Преподаватели [400%]; Соломин; Тимофеев; Петров; Кузнецов; Яковлева; Фомина → Бумага [0.02 пач]; Картриджи для принтера; Кузнецов; Петров; Преподаватели [400%]; Соломин; Тимофеев; Фомина; Яковлева |
| 5 | Разработка сайта 1 | resources none → Кузнецов; Тимофеев |
| 6 | Разработка сайта 2 | resources none → Кузнецов; Тимофеев |
| 9 | Проектирование сайта | resources none → Петров; Соколов |
| 10 | Программирование сайта | resources none → Соломин; Яковлева |
| 11 | Наполнение сайта | resources none → Фомина |
| 12 | Тестирование сайта | resources none → Соломин; Яковлева |

## Version 6 (saved 2024-03-26, file rk_08_01.mpp)

Note of the change: rk done

Last finish 2024-06-25 → 2024-07-30 (+35d).

Added:

| ID | Task | Duration | Start | Finish | Predecessors | Resources |
| --- | --- | --- | --- | --- | --- | --- |
| 6 | Разработка дизайна сайта 1 | 2d | 2024-06-25 | 2024-06-27 |  | Кузнецов |
| 7 | Программирование сайта 1 | 3d | 2024-06-27 | 2024-07-02 | 6 | Тимофеев |
| 9 | Разработка дизайна сайта 2 | 2d | 2024-06-28 | 2024-07-02 |  | Кузнецов |
| 10 | Программирование сайта 2 | 3d | 2024-07-02 | 2024-07-05 | 9 | Тимофеев |

Changed:

| ID | Task | Start | Finish | Duration | Other |
| --- | --- | --- | --- | --- | --- |
| 2 | Установка ПО |  | 2024-04-22 → 2024-05-13 (+21d) | 15d → 25d |  |
| 3 | Обучение персонала |  | 2024-05-20 → 2024-06-25 (+36d) | 20d → 44.22d | constraint none → start no earlier than 2024-04-16; resources Бумага [0.02 пач]; Картриджи для принтера; Кузнецов; Петров; Преподаватели [400%]; Соломин; Тимофеев; Фомина; Яковлева → Бумага [0.02 пач]; Картриджи для принтера; Кузнецов; Петров; Преподаватели [300%]; Соломин; Тимофеев; Фомина; Яковлева; Соколов |
| 4 | **Разработка представительских сайтов** | 2024-05-21 → 2024-06-25 (+35d) | 2024-05-30 → 2024-07-05 (+36d) |  |  |
| 5 | **Разработка сайта 1** | 2024-05-21 → 2024-06-25 (+35d) | 2024-05-27 → 2024-07-02 (+36d) |  | resources Кузнецов; Тимофеев → none |
| 8 | **Разработка сайта 2** | 2024-05-24 → 2024-06-28 (+35d) | 2024-05-30 → 2024-07-05 (+36d) |  | resources Кузнецов; Тимофеев → none |
| 11 | Представительские сайты созданы | 2024-05-30 → 2024-07-05 (+36d) | 2024-05-30 → 2024-07-05 (+36d) |  |  |
| 12 | **Разработка корпоративного сайта** | 2024-05-21 → 2024-06-25 (+35d) | 2024-06-25 → 2024-07-30 (+35d) |  |  |
| 13 | Проектирование сайта | 2024-05-21 → 2024-06-25 (+35d) | 2024-05-27 → 2024-07-02 (+36d) |  |  |
| 14 | Программирование сайта | 2024-05-28 → 2024-07-02 (+35d) | 2024-06-18 → 2024-07-23 (+35d) |  |  |
| 15 | Наполнение сайта | 2024-06-14 → 2024-07-18 (+34d) | 2024-06-18 → 2024-07-23 (+35d) |  |  |
| 16 | Тестирование сайта | 2024-06-19 → 2024-07-23 (+34d) | 2024-06-25 → 2024-07-30 (+35d) |  |  |
| 17 | Сдача сайта заказчику | 2024-06-25 → 2024-07-30 (+35d) | 2024-06-25 → 2024-07-30 (+35d) |  |  |

## Version 7 (saved 2024-03-26, file rk_07.mpp)

Note of the change: rk done

Last finish 2024-07-30 → 2024-06-25 (-35d).

Changed:

| ID | Task | Start | Finish | Duration | Other |
| --- | --- | --- | --- | --- | --- |
| 2 | Установка ПО |  | 2024-05-13 → 2024-04-22 (-21d) | 25d → 15d |  |
| 3 | Обучение персонала |  | 2024-06-25 → 2024-05-20 (-36d) | 44.22d → 20d | constraint start no earlier than 2024-04-16 → none; resources Бумага [0.02 пач]; Картриджи для принтера; Кузнецов; Петров; Преподаватели [300%]; Соломин; Тимофеев; Фомина; Яковлева; Соколов → Бумага [0.02 пач]; Картриджи для принтера; Кузнецов; Петров; Преподаватели [400%]; Соломин; Тимофеев; Фомина; Яковлева |
| 4 | **Разработка представительских сайтов** | 2024-06-25 → 2024-05-21 (-35d) | 2024-07-05 → 2024-05-30 (-36d) |  |  |
| 5 | **Разработка сайта 1** | 2024-06-25 → 2024-05-21 (-35d) | 2024-07-02 → 2024-05-27 (-36d) |  |  |
| 6 | Разработка дизайна сайта 1 | 2024-06-25 → 2024-05-21 (-35d) | 2024-06-27 → 2024-05-22 (-36d) |  |  |
| 7 | Программирование сайта 1 | 2024-06-27 → 2024-05-23 (-35d) | 2024-07-02 → 2024-05-27 (-36d) |  |  |
| 8 | **Разработка сайта 2** | 2024-06-28 → 2024-05-24 (-35d) | 2024-07-05 → 2024-05-30 (-36d) |  |  |
| 9 | Разработка дизайна сайта 2 | 2024-06-28 → 2024-05-24 (-35d) | 2024-07-02 → 2024-05-27 (-36d) |  |  |
| 10 | Программирование сайта 2 | 2024-07-02 → 2024-05-28 (-35d) | 2024-07-05 → 2024-05-30 (-36d) |  |  |
| 11 | Представительские сайты созданы | 2024-07-05 → 2024-05-30 (-36d) | 2024-07-05 → 2024-05-30 (-36d) |  |  |
| 12 | **Разработка корпоративного сайта** | 2024-06-25 → 2024-05-21 (-35d) | 2024-07-30 → 2024-06-25 (-35d) |  |  |
| 13 | Проектирование сайта | 2024-06-25 → 2024-05-21 (-35d) | 2024-07-02 → 2024-05-27 (-36d) |  |  |
| 14 | Программирование сайта | 2024-07-02 → 2024-05-28 (-35d) | 2024-07-23 → 2024-06-18 (-35d) |  |  |
| 15 | Наполнение сайта | 2024-07-18 → 2024-06-14 (-34d) | 2024-07-23 → 2024-06-18 (-35d) |  |  |
| 16 | Тестирование сайта | 2024-07-23 → 2024-06-19 (-34d) | 2024-07-30 → 2024-06-25 (-35d) |  |  |
| 17 | Сдача сайта заказчику | 2024-07-30 → 2024-06-25 (-35d) | 2024-07-30 → 2024-06-25 (-35d) |  |  |

## Version 8 (saved 2024-03-26, file rk_08.mpp)

Note of the change: rk done

Last finish 2024-06-25 → 2024-07-08 (+13d).

Changed:

| ID | Task | Start | Finish | Duration | Other |
| --- | --- | --- | --- | --- | --- |
| 3 | Обучение персонала |  | 2024-05-20 → 2024-05-31 (+11d) | 20d → 28.53d | constraint none → start no earlier than 2024-04-16; resources Бумага [0.02 пач]; Картриджи для принтера; Кузнецов; Петров; Преподаватели [400%]; Соломин; Тимофеев; Фомина; Яковлева → Бумага [0.02 пач]; Картриджи для принтера; Кузнецов; Петров; Преподаватели [300%]; Соломин; Тимофеев; Фомина; Яковлева; Соколов |
| 4 | **Разработка представительских сайтов** | 2024-05-21 → 2024-05-31 (+10d) | 2024-05-30 → 2024-06-13 (+14d) |  |  |
| 5 | **Разработка сайта 1** | 2024-05-21 → 2024-05-31 (+10d) | 2024-05-27 → 2024-06-07 (+11d) |  |  |
| 6 | Разработка дизайна сайта 1 | 2024-05-21 → 2024-05-31 (+10d) | 2024-05-22 → 2024-06-04 (+13d) |  |  |
| 7 | Программирование сайта 1 | 2024-05-23 → 2024-06-04 (+12d) | 2024-05-27 → 2024-06-07 (+11d) |  |  |
| 8 | **Разработка сайта 2** | 2024-05-24 → 2024-06-05 (+12d) | 2024-05-30 → 2024-06-13 (+14d) |  |  |
| 9 | Разработка дизайна сайта 2 | 2024-05-24 → 2024-06-05 (+12d) | 2024-05-27 → 2024-06-07 (+11d) |  |  |
| 10 | Программирование сайта 2 | 2024-05-28 → 2024-06-07 (+10d) | 2024-05-30 → 2024-06-13 (+14d) |  |  |
| 11 | Представительские сайты созданы | 2024-05-30 → 2024-06-13 (+14d) | 2024-05-30 → 2024-06-13 (+14d) |  |  |
| 12 | **Разработка корпоративного сайта** | 2024-05-21 → 2024-05-31 (+10d) | 2024-06-25 → 2024-07-08 (+13d) |  |  |
| 13 | Проектирование сайта | 2024-05-21 → 2024-05-31 (+10d) | 2024-05-27 → 2024-06-07 (+11d) |  |  |
| 14 | Программирование сайта | 2024-05-28 → 2024-06-07 (+10d) | 2024-06-18 → 2024-07-01 (+13d) |  |  |
| 15 | Наполнение сайта | 2024-06-14 → 2024-06-26 (+12d) | 2024-06-18 → 2024-07-01 (+13d) |  |  |
| 16 | Тестирование сайта | 2024-06-19 → 2024-07-01 (+12d) | 2024-06-25 → 2024-07-08 (+13d) |  |  |
| 17 | Сдача сайта заказчику | 2024-06-25 → 2024-07-08 (+13d) | 2024-06-25 → 2024-07-08 (+13d) |  |  |

## Version 9 (saved 2024-03-26, file rk_09_optimized.mpp)

Note of the change: rk done

Last finish 2024-07-08 → 2024-06-05 (-33d).

Changed:

| ID | Task | Start | Finish | Duration | Total float | Predecessors | Other |
| --- | --- | --- | --- | --- | --- | --- | --- |
| 1 | Начало проекта |  |  |  |  |  | baseline start none → 2024-04-01; baseline finish none → 2024-04-01 |
| 2 | Установка ПО |  | 2024-04-22 → 2024-04-05 (-17d) | 15d → 3.75d |  |  | resources ПО; Соколов → ПО; Соколов; Соломин; Тимофеев; Яковлева; baseline start none → 2024-04-02; baseline finish none → 2024-04-05 |
| 3 | Обучение персонала | 2024-04-16 → 2024-04-05 (-11d) | 2024-05-31 → 2024-05-08 (-23d) | 28.53d → 20d |  | 2SS+10d → 2 | constraint start no earlier than 2024-04-16 → none; resources Бумага [0.02 пач]; Картриджи для принтера; Кузнецов; Петров; Преподаватели [300%]; Соломин; Тимофеев; Фомина; Яковлева; Соколов → Бумага [0.02 пач]; Картриджи для принтера; Кузнецов; Петров; Преподаватели [400%]; Соломин; Тимофеев; Фомина; Яковлева; baseline start none → 2024-04-05; baseline finish none → 2024-05-08 |
| 4 | **Разработка представительских сайтов** | 2024-05-31 → 2024-05-08 (-23d) | 2024-06-13 → 2024-05-22 (-22d) |  | 17d → 9.5d |  | baseline start none → 2024-05-08; baseline finish none → 2024-05-22 |
| 5 | **Разработка сайта 1** | 2024-05-31 → 2024-05-08 (-23d) | 2024-06-07 → 2024-05-17 (-21d) |  | 17d → 9.5d |  | baseline start none → 2024-05-08; baseline finish none → 2024-05-17 |
| 6 | Разработка дизайна сайта 1 | 2024-05-31 → 2024-05-08 (-23d) | 2024-06-04 → 2024-05-14 (-21d) |  | 17d → 9.5d |  | baseline start none → 2024-05-08; baseline finish none → 2024-05-14 |
| 7 | Программирование сайта 1 | 2024-06-04 → 2024-05-14 (-21d) | 2024-06-07 → 2024-05-17 (-21d) |  | 17d → 9.5d |  | baseline start none → 2024-05-14; baseline finish none → 2024-05-17 |
| 8 | **Разработка сайта 2** | 2024-06-05 → 2024-05-15 (-21d) | 2024-06-13 → 2024-05-22 (-22d) |  | 17d → 9.5d |  | baseline start none → 2024-05-15; baseline finish none → 2024-05-22 |
| 9 | Разработка дизайна сайта 2 | 2024-06-05 → 2024-05-15 (-21d) | 2024-06-07 → 2024-05-17 (-21d) |  | 17d → 9.5d |  | baseline start none → 2024-05-15; baseline finish none → 2024-05-17 |
| 10 | Программирование сайта 2 | 2024-06-07 → 2024-05-17 (-21d) | 2024-06-13 → 2024-05-22 (-22d) |  | 17d → 9.5d |  | baseline start none → 2024-05-17; baseline finish none → 2024-05-22 |
| 11 | Представительские сайты созданы | 2024-06-13 → 2024-05-22 (-22d) | 2024-06-13 → 2024-05-22 (-22d) |  | 17d → 9.5d |  | baseline start none → 2024-05-22; baseline finish none → 2024-05-22 |
| 12 | **Разработка корпоративного сайта** | 2024-05-31 → 2024-05-08 (-23d) | 2024-07-08 → 2024-06-05 (-33d) | 25d → 17.5d |  |  | baseline start none → 2024-05-08; baseline finish none → 2024-06-05 |
| 13 | Проектирование сайта | 2024-05-31 → 2024-05-08 (-23d) | 2024-06-07 → 2024-05-15 (-23d) | 5d → 2.5d |  |  | resources Петров; Соколов → Петров; Соколов; Соломин; Яковлева; baseline start none → 2024-05-08; baseline finish none → 2024-05-15 |
| 14 | Программирование сайта | 2024-06-07 → 2024-05-15 (-23d) | 2024-07-01 → 2024-05-29 (-33d) | 15d → 10d |  |  | resources Соломин; Яковлева → Соломин; Яковлева; Соколов; baseline start none → 2024-05-15; baseline finish none → 2024-05-29 |
| 15 | Наполнение сайта | 2024-06-26 → 2024-05-24 (-33d) | 2024-07-01 → 2024-05-29 (-33d) |  |  |  | baseline start none → 2024-05-24; baseline finish none → 2024-05-29 |
| 16 | Тестирование сайта | 2024-07-01 → 2024-05-29 (-33d) | 2024-07-08 → 2024-06-05 (-33d) |  |  |  | baseline start none → 2024-05-29; baseline finish none → 2024-06-05 |
| 17 | Сдача сайта заказчику | 2024-07-08 → 2024-06-05 (-33d) | 2024-07-08 → 2024-06-05 (-33d) |  |  |  | baseline start none → 2024-06-05; baseline finish none → 2024-06-05 |

## Version 10 (data date 2024-05-20, saved 2024-03-26, file rk_10_02.mpp)

Note of the change: rk done

Last finish 2024-06-05 → 2024-06-13 (+8d). Complete tasks 0 → 1.

Changed:

| ID | Task | Start | Finish | Duration | Complete | Total float |
| --- | --- | --- | --- | --- | --- | --- |
| 2 | Установка ПО | 2024-04-02 A | 2024-04-05 → 2024-04-12 A (+7d) | 3.75d → 9d | 0% → 100% | 0d → none |
| 3 | Обучение персонала | 2024-04-05 → 2024-04-15 (+10d) | 2024-05-08 → 2024-05-17 (+9d) |  |  |  |
| 4 | **Разработка представительских сайтов** | 2024-05-08 → 2024-05-20 (+12d) | 2024-05-22 → 2024-05-29 (+7d) |  |  |  |
| 5 | **Разработка сайта 1** | 2024-05-08 → 2024-05-20 (+12d) | 2024-05-17 → 2024-05-24 (+7d) |  |  |  |
| 6 | Разработка дизайна сайта 1 | 2024-05-08 → 2024-05-20 (+12d) | 2024-05-14 → 2024-05-21 (+7d) |  |  |  |
| 7 | Программирование сайта 1 | 2024-05-14 → 2024-05-22 (+8d) | 2024-05-17 → 2024-05-24 (+7d) |  |  |  |
| 8 | **Разработка сайта 2** | 2024-05-15 → 2024-05-23 (+8d) | 2024-05-22 → 2024-05-29 (+7d) |  |  |  |
| 9 | Разработка дизайна сайта 2 | 2024-05-15 → 2024-05-23 (+8d) | 2024-05-17 → 2024-05-24 (+7d) |  |  |  |
| 10 | Программирование сайта 2 | 2024-05-17 → 2024-05-27 (+10d) | 2024-05-22 → 2024-05-29 (+7d) |  |  |  |
| 11 | Представительские сайты созданы | 2024-05-22 → 2024-05-29 (+7d) | 2024-05-22 → 2024-05-29 (+7d) |  |  |  |
| 12 | **Разработка корпоративного сайта** | 2024-05-08 → 2024-05-20 (+12d) | 2024-06-05 → 2024-06-13 (+8d) |  |  |  |
| 13 | Проектирование сайта | 2024-05-08 → 2024-05-20 (+12d) | 2024-05-15 → 2024-05-22 (+7d) |  |  |  |
| 14 | Программирование сайта | 2024-05-15 → 2024-05-22 (+7d) | 2024-05-29 → 2024-06-05 (+7d) |  |  |  |
| 15 | Наполнение сайта | 2024-05-24 → 2024-05-31 (+7d) | 2024-05-29 → 2024-06-05 (+7d) |  |  |  |
| 16 | Тестирование сайта | 2024-05-29 → 2024-06-05 (+7d) | 2024-06-05 → 2024-06-13 (+8d) |  |  |  |
| 17 | Сдача сайта заказчику | 2024-06-05 → 2024-06-13 (+8d) | 2024-06-05 → 2024-06-13 (+8d) |  |  |  |

## Version 11 (data date 2024-05-20, saved 2024-03-26, file rk_10_03.mpp)

Note of the change: rk done

Last finish 2024-06-13 → 2024-06-19 (+6d). Complete tasks 1 → 2.

Changed:

| ID | Task | Start | Finish | Duration | Complete | Total float |
| --- | --- | --- | --- | --- | --- | --- |
| 1 | Начало проекта | 2024-04-01 A | 2024-04-01 A |  | 0% → 100% | 47.5d → none |
| 3 | Обучение персонала | 2024-04-15 A | 2024-05-17 → 2024-05-23 (+6d) | 20d → 22d | 0% → 91% |  |
| 4 | **Разработка представительских сайтов** | 2024-05-20 → 2024-05-24 (+4d) | 2024-05-29 → 2024-06-04 (+6d) |  |  |  |
| 5 | **Разработка сайта 1** | 2024-05-20 → 2024-05-24 (+4d) | 2024-05-24 → 2024-05-30 (+6d) |  |  |  |
| 6 | Разработка дизайна сайта 1 | 2024-05-20 → 2024-05-24 (+4d) | 2024-05-21 → 2024-05-27 (+6d) |  |  |  |
| 7 | Программирование сайта 1 | 2024-05-22 → 2024-05-28 (+6d) | 2024-05-24 → 2024-05-30 (+6d) |  |  |  |
| 8 | **Разработка сайта 2** | 2024-05-23 → 2024-05-29 (+6d) | 2024-05-29 → 2024-06-04 (+6d) |  |  |  |
| 9 | Разработка дизайна сайта 2 | 2024-05-23 → 2024-05-29 (+6d) | 2024-05-24 → 2024-05-30 (+6d) |  |  |  |
| 10 | Программирование сайта 2 | 2024-05-27 → 2024-05-31 (+4d) | 2024-05-29 → 2024-06-04 (+6d) |  |  |  |
| 11 | Представительские сайты созданы | 2024-05-29 → 2024-06-04 (+6d) | 2024-05-29 → 2024-06-04 (+6d) |  |  |  |
| 12 | **Разработка корпоративного сайта** | 2024-05-20 → 2024-05-24 (+4d) | 2024-06-13 → 2024-06-19 (+6d) |  |  |  |
| 13 | Проектирование сайта | 2024-05-20 → 2024-05-24 (+4d) | 2024-05-22 → 2024-05-28 (+6d) |  |  |  |
| 14 | Программирование сайта | 2024-05-22 → 2024-05-28 (+6d) | 2024-06-05 → 2024-06-11 (+6d) |  |  |  |
| 15 | Наполнение сайта | 2024-05-31 → 2024-06-06 (+6d) | 2024-06-05 → 2024-06-11 (+6d) |  |  |  |
| 16 | Тестирование сайта | 2024-06-05 → 2024-06-11 (+6d) | 2024-06-13 → 2024-06-19 (+6d) |  |  |  |
| 17 | Сдача сайта заказчику | 2024-06-13 → 2024-06-19 (+6d) | 2024-06-13 → 2024-06-19 (+6d) |  |  |  |
